# WBSTool Project

Schedule from ProjectLibre, 2019-01-01 to 2019-05-02.

## Calendars

- Standard: Mon-Fri 08:00-12:00, 13:00-17:00; Sat-Sun off.

## Resources

| Resource | Rate |
| --- | --- |
| No Asignado |  |
| Programador Junior1 | 12.5 |
| Programador Junior2 | 12.5 |
| Analista-Diseñador | 15 |
| Analista-Programador | 15 |
| Programador Senior | 18 |
| Director de proyecto | 22 |
| Personal de empresa |  |

## Schedule

| ID | WBS | Task | Duration | Start | Finish | Predecessors | Total slack | Constraint | Resources |
| --- | --- | --- | --- | --- | --- | --- | --- | --- | --- |
| 1 | 1 | **Proyecto de sistema para bar tecnológico** | 87.58d | 2019-01-01 09:00 | 2019-05-02 14:39 |  |  | start no earlier than 2019-01-01 08:00 |  |
| 2 | 1.1 | **Tareas de Gestión** | 86d | 2019-01-01 09:00 | 2019-05-01 08:59 |  | 158.39d |  |  |
| 3 | 1.1.1 | **Tareas de riesgos** | 64.06d | 2019-01-01 09:00 | 2019-04-01 09:30 |  | 2352.03d |  |  |
| 4 | 1.1.1.1 | Control de riesgos y daños 1 | 0.06d | 2019-02-01 09:00 | 2019-02-01 09:29 |  | 6452.08d | start no earlier than 2019-02-01 09:00 | Director de proyecto [50%]; Personal de empresa |
| 5 | 1.1.1.2 | Control de riesgos y daños 2 | 0.06d | 2019-03-01 09:00 | 2019-03-01 09:29 |  | 4452.08d | start no earlier than 2019-03-01 09:00 | Director de proyecto [50%]; Personal de empresa |
| 6 | 1.1.1.3 | Control de riesgos y daños 3 | 0.06d | 2019-04-01 09:00 | 2019-04-01 09:30 |  | 2264.53d | start no earlier than 2019-04-01 09:00 | Director de proyecto [50%]; Personal de empresa |
| 7 | 1.1.1.4 | **Respuestas iniciales a riesgos** | 5d | 2019-01-01 09:00 | 2019-01-08 09:00 |  | 8258.28d |  |  |
| 8 | 1.1.1.4.1 | Crear Plan de incentivos | 1d | 2019-01-01 09:30 | 2019-01-02 09:30 | 14 | 8652.03d | start no earlier than 2019-01-01 09:00 | Director de proyecto [50%] |
| 9 | 1.1.1.4.2 | Plan de comportamiento | 0.5d | 2019-01-01 09:00 | 2019-01-01 14:00 | 8 | 2977.66d |  | Director de proyecto [50%] |
| 10 | 1.1.1.4.3 | Crear plan de errores y problemas | 0.25d | 2019-01-01 14:00 | 2019-01-01 16:00 | 9 | 2977.66d |  | Director de proyecto [50%]; Analista-Programador [50%] |
| 11 | 1.1.1.4.4 | Formación de empleados | 5d | 2019-01-01 09:00 | 2019-01-08 09:00 |  | 8258.28d |  | Programador Junior1; Programador Senior |
| 12 | 1.1.2 | **Tareas de comunicación** | 85.12d | 2019-01-01 09:00 | 2019-04-30 09:59 |  | 245.89d |  |  |
| 13 | 1.1.2.1 | **Reuniones equipo** | 85.06d | 2019-01-01 09:00 | 2019-04-30 09:29 |  | 252.08d |  |  |
| 14 | 1.1.2.1.1 | Reunión equipo 1 | 0.06d | 2019-01-01 09:00 | 2019-01-01 09:30 |  | 8652.03d |  | Programador Junior1; Programador Junior2; Analista-Diseñador; Analista-Programador; Programador Senior; Director de proyecto |
| 15 | 1.1.2.1.2 | Reunión equipo 2 | 0.06d | 2019-01-08 09:00 | 2019-01-08 09:29 | 63 | 8252.08d | start no earlier than 2019-01-08 09:00 | Programador Junior1; Programador Junior2; Analista-Diseñador; Analista-Programador; Programador Senior; Director de proyecto |
| 16 | 1.1.2.1.3 | Reunión equipo 3 | 0.06d | 2019-01-15 09:00 | 2019-01-15 09:29 |  | 2818.96d | start no earlier than 2019-01-15 09:00 | Programador Junior1; Programador Junior2; Analista-Diseñador; Analista-Programador; Programador Senior; Director de proyecto |
| 17 | 1.1.2.1.4 | Reunión equipo 4 | 0.06d | 2019-01-22 09:29 | 2019-01-22 09:59 | 97 | 2818.96d | start no earlier than 2019-01-22 09:00 | Programador Junior1; Programador Junior2; Analista-Diseñador; Analista-Programador; Programador Senior; Director de proyecto |
| 18 | 1.1.2.1.5 | Reunión equipo 5 | 0.06d | 2019-01-29 09:00 | 2019-01-29 09:29 |  | 2812.66d | start no earlier than 2019-01-29 09:00 | Programador Junior1; Programador Junior2; Analista-Diseñador; Analista-Programador; Programador Senior; Director de proyecto |
| 19 | 1.1.2.1.6 | Reunión equipo 6 | 0.06d | 2019-02-05 09:00 | 2019-02-05 09:29 | 159 | 6252.08d | start no earlier than 2019-02-05 09:00 | Programador Junior1; Programador Junior2; Analista-Diseñador; Analista-Programador; Programador Senior; Director de proyecto |
| 20 | 1.1.2.1.7 | Reunión equipo 7 | 0.06d | 2019-02-12 09:00 | 2019-02-12 09:29 | 170 | 268.85d | start no earlier than 2019-02-12 09:00 | Programador Junior1; Programador Junior2; Analista-Diseñador; Analista-Programador; Programador Senior; Director de proyecto |
| 21 | 1.1.2.1.8 | Reunión equipo 8 | 0.06d | 2019-02-19 09:00 | 2019-02-19 09:29 | 181 | 250.05d | start no earlier than 2019-02-19 09:00 | Programador Junior1; Programador Junior2; Analista-Diseñador; Analista-Programador; Programador Senior; Director de proyecto |
| 22 | 1.1.2.1.9 | Reunión equipo 9 | 0.06d | 2019-02-26 09:00 | 2019-02-26 09:29 |  | 837.66d | start no earlier than 2019-02-26 09:00 | Programador Junior1; Programador Junior2; Analista-Diseñador; Analista-Programador; Programador Senior; Director de proyecto |
| 23 | 1.1.2.1.10 | Reunión equipo 10 | 0.06d | 2019-03-05 13:00 | 2019-03-05 13:30 | 218 | 250.05d | start no earlier than 2019-03-05 09:00 | Programador Junior1; Programador Junior2; Analista-Diseñador; Analista-Programador; Programador Senior; Director de proyecto |
| 24 | 1.1.2.1.11 | Reunión equipo 11 | 0.06d | 2019-03-12 09:00 | 2019-03-12 09:29 |  | 237.66d | start no earlier than 2019-03-12 09:00 | Programador Junior1; Programador Junior2; Analista-Diseñador; Analista-Programador; Programador Senior; Director de proyecto |
| 25 | 1.1.2.1.12 | Reunion equipo 12 | 0.06d | 2019-03-19 14:29 | 2019-03-19 14:59 | 249 | 3195.89d | start no earlier than 2019-03-19 09:00 | Programador Junior1; Programador Junior2; Analista-Diseñador; Analista-Programador; Programador Senior; Director de proyecto |
| 26 | 1.1.2.1.13 | Reunión equipo 13 | 0.06d | 2019-03-26 09:00 | 2019-03-26 09:29 |  | 12.66d | start no earlier than 2019-03-26 09:00 | Programador Junior1; Programador Junior2; Analista-Diseñador; Analista-Programador; Programador Senior; Director de proyecto |
| 27 | 1.1.2.1.14 | Reunión equipo 14 | 0.06d | 2019-04-02 14:29 | 2019-04-02 14:59 | 287 | 12.66d | start no earlier than 2019-04-02 09:00 | Programador Junior1; Programador Junior2; Analista-Diseñador; Analista-Programador; Programador Senior; Director de proyecto |
| 28 | 1.1.2.1.15 | Reunión equipo 15 | 0.06d | 2019-04-10 11:29 | 2019-04-10 11:59 | 330 | 12.66d | start no earlier than 2019-04-09 09:00 | Programador Junior1; Programador Junior2; Analista-Diseñador; Analista-Programador; Programador Senior; Director de proyecto |
| 29 | 1.1.2.1.16 | Reunión equipo 16 | 0.06d | 2019-04-16 11:59 | 2019-04-16 13:29 | 370 | 1214.74d | start no earlier than 2019-04-16 09:00 | Programador Junior1; Programador Junior2; Analista-Diseñador; Analista-Programador; Programador Senior; Director de proyecto |
| 30 | 1.1.2.1.17 | Reunión de equipo 17 | 0.06d | 2019-04-23 11:59 | 2019-04-23 13:29 | 383 | 12.66d | start no earlier than 2019-04-23 09:00 | Programador Junior1; Programador Junior2; Analista-Diseñador; Analista-Programador; Programador Senior; Director de proyecto |
| 31 | 1.1.2.1.18 | Reunión de equipo 18 | 0.06d | 2019-04-30 09:00 | 2019-04-30 09:29 |  |  | start no earlier than 2019-04-30 09:00 | Programador Junior1; Programador Junior2; Analista-Diseñador; Analista-Programador; Programador Senior; Director de proyecto |

| ID | WBS | Task | Duration | Start | Finish | Predecessors | Total slack | Constraint | Resources |
| --- | --- | --- | --- | --- | --- | --- | --- | --- | --- |
| 32 | 1.1.2.2 | **Reuniones clientes** | 64.12d | 2019-01-30 09:00 | 2019-04-30 09:59 |  | 245.89d |  |  |
| 33 | 1.1.2.2.1 | Reunión cliente 1 | 0.06d | 2019-01-30 09:00 | 2019-01-30 09:29 |  | 2712.66d | start no earlier than 2019-01-30 09:00 | Analista-Diseñador |
| 34 | 1.1.2.2.2 | Reunión cliente 2 | 0.06d | 2019-02-28 09:00 | 2019-02-28 09:29 | 197 | 4552.08d | start no earlier than 2019-02-28 09:00 | Analista-Diseñador |
| 35 | 1.1.2.2.3 | Reunión cliente 3 | 0.06d | 2019-03-30 09:00 | 2019-04-01 08:29 |  | 2364.58d | start no earlier than 2019-03-30 09:00 | Analista-Diseñador |
| 36 | 1.1.2.2.4 | Reunión cliente 4 | 0.06d | 2019-04-30 09:29 | 2019-04-30 09:59 | 31 | 158.39d | start no earlier than 2019-04-30 09:00 | Analista-Diseñador |
| 37 | 1.1.3 | **Tareas de gestión de Costes** | 75.94d | 2019-01-15 09:29 | 2019-05-01 08:59 |  | 158.39d |  |  |
| 38 | 1.1.3.1 | Control de costes 1 | 0.88d | 2019-01-15 09:29 | 2019-01-16 08:29 | 16 | 7664.58d | start no earlier than 2019-01-15 09:00 | Director de proyecto [50%] |
| 39 | 1.1.3.2 | Control de costes 2 | 0.88d | 2019-01-30 09:00 | 2019-01-30 17:00 |  | 6570.78d | start no earlier than 2019-01-30 09:00 | Director de proyecto [50%] |
| 40 | 1.1.3.3 | Control de costes 3 | 0.88d | 2019-02-15 09:00 | 2019-02-15 17:00 |  | 5370.78d | start no earlier than 2019-02-15 09:00 | Director de proyecto [50%] |
| 41 | 1.1.3.4 | Control de costes 4 | 0.88d | 2019-03-02 09:00 | 2019-03-04 16:00 |  | 4283.28d | start no earlier than 2019-03-02 09:00 | Director de proyecto [50%] |
| 42 | 1.1.3.5 | Control de costes 5 | 0.88d | 2019-03-16 09:00 | 2019-03-18 16:00 |  | 3283.28d | start no earlier than 2019-03-16 09:00 | Director de proyecto [50%] |
| 43 | 1.1.3.6 | Control de costes 6 | 0.88d | 2019-04-01 09:30 | 2019-04-02 08:30 | 6 | 2264.53d | start no earlier than 2019-03-30 09:00 | Director de proyecto [50%] |
| 44 | 1.1.3.7 | Control de costes 7 | 0.88d | 2019-04-15 09:00 | 2019-04-15 17:00 |  | 1270.78d | start no earlier than 2019-04-15 09:00 | Director de proyecto [50%] |
| 45 | 1.1.3.8 | Control de costes 8 | 0.88d | 2019-04-30 09:59 | 2019-05-01 08:59 | 36 | 158.39d | start no earlier than 2019-04-30 09:00 | Director de proyecto [50%] |
| 46 | 1.1.3.9 | Informe de costes 1 | 0.88d | 2019-01-15 09:29 | 2019-01-16 08:29 | 16 | 7664.58d | start no earlier than 2019-01-15 09:00 | Director de proyecto [50%] |
| 47 | 1.1.3.10 | Informe de costes 2 | 0.88d | 2019-01-30 09:00 | 2019-01-30 17:00 |  | 6570.78d | start no earlier than 2019-01-30 09:00 | Director de proyecto [50%] |
| 48 | 1.1.3.11 | Informe de costes 3 | 0.88d | 2019-02-15 09:00 | 2019-02-15 17:00 |  | 5370.78d | start no earlier than 2019-02-15 09:00 | Director de proyecto [50%] |
| 49 | 1.1.3.12 | Informe de costes 4 | 0.88d | 2019-03-02 09:00 | 2019-03-04 16:00 |  | 4283.28d | start no earlier than 2019-03-02 09:00 | Director de proyecto [50%] |
| 50 | 1.1.3.13 | Informe de costes 5 | 0.88d | 2019-03-16 09:00 | 2019-03-18 16:00 |  | 3283.28d | start no earlier than 2019-03-16 09:00 | Director de proyecto [50%] |
| 51 | 1.1.3.14 | Informe de costes 6 | 0.88d | 2019-04-01 09:30 | 2019-04-02 08:30 | 6 | 2264.53d | start no earlier than 2019-03-30 09:00 | Director de proyecto [50%] |
| 52 | 1.1.3.15 | Informe de costes 7 | 0.88d | 2019-04-15 09:00 | 2019-04-15 17:00 |  | 1270.78d | start no earlier than 2019-04-15 09:00 | Director de proyecto [50%] |
| 53 | 1.1.3.16 | Informe de costes 8 | 0.88d | 2019-04-30 09:59 | 2019-05-01 08:59 | 36 | 158.39d | start no earlier than 2019-04-30 09:00 | Director de proyecto [50%] |
| 54 | 1.1 | **Análisis de requisitos del sistema** | 19.25d | 2019-01-01 16:00 | 2019-01-29 08:59 | 10 | 2818.96d |  |  |
| 55 | 1.1.1 | **Identificación de las necesidades del cliente** | 4.1d | 2019-01-01 16:00 | 2019-01-07 16:48 |  | 2977.66d |  |  |
| 56 | 1.1.1.1 | **Especificación informal del sistema** | 4.1d | 2019-01-01 16:00 | 2019-01-07 16:48 |  | 2977.66d |  |  |
| 57 | 1.1.1.1.1 | **Técnica de obtención de requisitos** | 3d | 2019-01-01 16:00 | 2019-01-04 16:00 |  | 2977.66d |  |  |
| 58 | 1.2.1.1.1.1 | Preparar preguntas y temáticas para entrevista inicial | 0.5d | 2019-01-01 16:00 | 2019-01-02 11:00 |  | 2977.66d |  | Analista-Diseñador |
| 59 | 1.2.1.1.1.2 | Entrevistar jefe de proyecto | 0.5d | 2019-01-02 11:00 | 2019-01-02 16:00 | 58 | 2977.66d |  | Analista-Diseñador; Director de proyecto |
| 60 | 1.2.1.1.1.3 | Cuestionar futuros empleados para conocer sus necesidades | 1d | 2019-01-02 16:00 | 2019-01-03 16:00 | 59 | 2977.66d |  | Analista-Diseñador |
| 61 | 1.2.1.1.1.4 | Cuestionar posibles clientes para conocer sus preferencias | 1d | 2019-01-03 16:00 | 2019-01-04 16:00 | 60 | 2977.66d |  | Analista-Diseñador |

| ID | WBS | Task | Duration | Start | Finish | Predecessors | Total slack | Constraint | Resources |
| --- | --- | --- | --- | --- | --- | --- | --- | --- | --- |
| 62 | 1.1.1.2 | **Determinación informal de aspectos del sistema** | 1.1d | 2019-01-04 16:00 | 2019-01-07 16:48 | 57 | 2977.66d |  |  |
| 63 | 1.2.1.1.2.1 | Determinar necesidades de jefe de proyectos | 0.5d | 2019-01-04 16:00 | 2019-01-07 11:00 |  | 2977.66d |  | Analista-Diseñador; Director de proyecto |
| 64 | 1.1.1.2.1 | **Determinación informal de funciones** | 0.6d | 2019-01-07 11:00 | 2019-01-07 16:48 | 63 | 2977.66d |  |  |
| 65 | 1.2.1.1.2.2.1 | Cuestionar futuros empleados para conocer sus necesidades | 0.1d | 2019-01-07 11:00 | 2019-01-07 11:48 | 15 | 2977.66d |  | Analista-Diseñador |
| 66 | 1.2.1.1.2.2.2 | Cuestionar posibles clientes para conocer sus preferencias | 0.1d | 2019-01-07 16:00 | 2019-01-07 16:48 | 77 | 2977.66d | start no earlier than 2019-01-04 11:12 | Analista-Diseñador |
| 67 | 1.1.1.2.2 | **Determinación informal de información manejada** | 0.2d | 2019-01-07 11:00 | 2019-01-07 13:36 | 63 | 2987.66d |  |  |
| 68 | 1.2.1.1.2.3.1 | Cuestionar futuros empleados para conocer sus necesidades | 0.1d | 2019-01-07 11:48 | 2019-01-07 13:36 | 65 | 2977.66d |  | Analista-Diseñador |
| 69 | 1.2.1.1.2.3.2 | Cuestionar posibles clientes para conocer sus preferencias | 0.1d | 2019-01-07 11:00 | 2019-01-07 11:48 | 66 | 2997.66d |  | Analista-Diseñador |
| 70 | 1.1.1.2.3 | **Determinación informal de interfaces del sistema** | 0.2d | 2019-01-07 11:48 | 2019-01-07 14:24 | 63 | 2987.66d |  |  |
| 71 | 1.2.1.1.2.4.1 | Cuestionar futuros empleados para conocer sus necesidades | 0.1d | 2019-01-07 13:36 | 2019-01-07 14:24 | 68 | 2977.66d |  | Analista-Diseñador |
| 72 | 1.2.1.1.2.4.2 | Cuestionar posibles clientes para conocer sus preferencias | 0.1d | 2019-01-07 11:48 | 2019-01-07 13:36 | 69 | 2997.66d |  | Analista-Diseñador |
| 73 | 1.1.1.2.4 | **Determinación informal de rendimiento del sistema** | 0.2d | 2019-01-07 13:36 | 2019-01-07 15:12 | 63 | 2987.66d |  |  |
| 74 | 1.2.1.1.2.5.1 | Cuestionar futuros empleados para conocer sus necesidades | 0.1d | 2019-01-07 14:24 | 2019-01-07 15:12 | 71 | 2977.66d |  | Analista-Diseñador |
| 75 | 1.2.1.1.2.5.2 | Cuestionar posibles clientes para conocer sus preferencias | 0.1d | 2019-01-07 13:36 | 2019-01-07 14:24 | 72 | 2997.66d |  | Analista-Diseñador |
| 76 | 1.1.1.2.5 | **Determinación informal de las restricciones del sistema** | 0.2d | 2019-01-07 14:24 | 2019-01-07 16:00 | 63 | 2987.66d |  |  |
| 77 | 1.2.1.1.2.6.1 | Cuestionar futuros empleados para conocer sus necesidades | 0.1d | 2019-01-07 15:12 | 2019-01-07 16:00 | 74 | 2977.66d |  | Analista-Diseñador |
| 78 | 1.2.1.1.2.6.2 | Cuestionar posibles clientes para conocer sus preferencias | 0.1d | 2019-01-07 14:24 | 2019-01-07 15:12 | 75 | 2997.66d |  | Analista-Diseñador |
| 79 | 1.1.2 | **Asignación de funciones a cada elemento del sistema** | 6.59d | 2019-01-07 16:48 | 2019-01-16 13:29 | 55 | 2818.96d |  |  |
| 80 | 1.1.2.1 | **Alternativas de creación del sistema** | 2.5d | 2019-01-07 16:48 | 2019-01-10 11:48 |  | 2977.66d |  |  |
| 81 | 1.2.2.1.1 | Buscar tecnologías y metodologías alternativas | 2.5d | 2019-01-07 16:48 | 2019-01-10 11:48 |  | 2977.66d |  | Analista-Diseñador |
| 82 | 1.2.2.2 | Informar del progreso de la semana al Jefe de proyecto | 0.12d | 2019-01-10 11:48 | 2019-01-10 13:48 | 80 | 2977.66d |  | Analista-Diseñador; Director de proyecto |
| 83 | 1.1.2.2 | **Validación de las alternativas de creación del sistema** | 3.96d | 2019-01-10 13:48 | 2019-01-16 13:29 | 82 | 2818.96d |  |  |
| 84 | 1.2.2.3.1 | Analizar las alternativas obtenidas | 1d | 2019-01-10 13:48 | 2019-01-11 13:48 |  | 2977.66d |  | Analista-Diseñador |
| 85 | 1.2.2.3.2 | Comparar las alternativas con la propuesta original | 1d | 2019-01-15 09:29 | 2019-01-16 09:29 | 16, 84 | 2818.96d |  | Analista-Diseñador |
| 86 | 1.2.2.3.3 | Decidir finalmente que tecnología usar | 0.25d | 2019-01-16 09:29 | 2019-01-16 11:29 | 85 | 2818.96d |  | Analista-Diseñador |
| 87 | 1.2.2.3.4 | Informar al Jefe del progreso de la semana | 0.12d | 2019-01-16 11:29 | 2019-01-16 13:29 | 86 | 2818.96d |  | Analista-Diseñador; Director de proyecto |

| ID | WBS | Task | Duration | Start | Finish | Predecessors | Total slack | Resources |
| --- | --- | --- | --- | --- | --- | --- | --- | --- |
| 88 | 1.1.3 | **Evaluación de la viabilidad del sistema** | 7.56d | 2019-01-16 13:29 | 2019-01-28 08:59 | 79 | 2818.96d |  |
| 89 | 1.1.3.1 | **Estudio de viabilidad económico** | 2.5d | 2019-01-16 13:29 | 2019-01-21 08:29 |  | 2818.96d |  |
| 90 | 1.2.3.1.1 | Realizar análisis de costes económicos | 0.62d | 2019-01-16 13:29 | 2019-01-17 09:29 |  | 2818.96d | Analista-Diseñador |
| 91 | 1.2.3.1.2 | Realizar análisis de mercado | 0.62d | 2019-01-17 09:29 | 2019-01-17 15:29 | 90 | 2818.96d | Analista-Diseñador |
| 92 | 1.2.3.1.3 | Realizar estimaciones coste-beneficio y tiempo-beneficio | 0.62d | 2019-01-17 15:29 | 2019-01-18 11:29 | 91 | 2818.96d | Analista-Diseñador |
| 93 | 1.2.3.1.4 | Reunirse con el jefe para decidir su el proyecto se considera viable | 0.62d | 2019-01-18 11:29 | 2019-01-21 08:29 | 92 | 2818.96d | Analista-Diseñador |
| 94 | 1.1.3.2 | **Estudio de viabilidad técnico** | 1.81d | 2019-01-21 08:29 | 2019-01-22 15:59 | 89 | 2818.96d |  |
| 95 | 1.2.3.2.1 | Estudiar las tecnologías disponibles para el proyecto | 0.62d | 2019-01-21 08:29 | 2019-01-21 14:29 |  | 2818.96d | Analista-Programador |
| 96 | 1.2.3.2.2 | Analizar recursos y tecnologías a las que tiene acceso la empresa | 0.25d | 2019-01-21 14:29 | 2019-01-21 16:29 | 95 | 2818.96d | Analista-Programador |
| 97 | 1.2.3.2.3 | Analizar recursos y tecnologías de terceros que podrían comprarse o contratarse | 0.25d | 2019-01-21 16:29 | 2019-01-22 09:29 | 96 | 2818.96d | Analista-Programador |
| 98 | 1.2.3.2.4 | Analizar con la información obtenida si el proyecto es viable | 0.62d | 2019-01-22 09:59 | 2019-01-22 15:59 | 17, 97 | 2818.96d | Analista-Programador |
| 99 | 1.1.3.3 | **Estudio de viabilidad legal** | 2d | 2019-01-22 15:59 | 2019-01-24 15:59 | 94 | 2818.96d |  |
| 100 | 1.2.3.3.1 | Estudiar las leyes relacionadas con la parte tecnológica del proyecto | 0.5d | 2019-01-22 15:59 | 2019-01-23 10:59 |  | 2818.96d | Director de proyecto |
| 101 | 1.2.3.3.2 | Estudiar las leyes relacionadas con al parte de hostelería del proyecto | 0.5d | 2019-01-23 10:59 | 2019-01-23 15:59 | 100 | 2818.96d | Director de proyecto |
| 102 | 1.2.3.3.3 | Estudiar las leyes relacionadas con salud e higiene de local | 0.5d | 2019-01-23 15:59 | 2019-01-24 10:59 | 101 | 2818.96d | Director de proyecto |
| 103 | 1.2.3.3.4 | Realizar un informe sobre los estudios legales | 0.38d | 2019-01-24 10:59 | 2019-01-24 14:59 | 102 | 2818.96d | Director de proyecto |
| 104 | 1.2.3.3.5 | Analizar con la información obtenida si el proyecto es legalmente viable | 0.12d | 2019-01-24 14:59 | 2019-01-24 15:59 | 103 | 2818.96d | Director de proyecto |
| 105 | 1.1.3.4 | **Estudio de viabilidad de plazos** | 1.25d | 2019-01-24 15:59 | 2019-01-28 08:59 | 99 | 2818.96d |  |
| 106 | 1.2.3.4.1 | Realizar análisis de costes temporales | 1d | 2019-01-24 15:59 | 2019-01-25 15:59 |  | 2818.96d | Analista-Diseñador |
| 107 | 1.2.3.4.2 | Realizar planificación de distribución de trabajo | 0.25d | 2019-01-24 15:59 | 2019-01-25 08:59 |  | 2893.96d | Analista-Diseñador |
| 108 | 1.2.3.4.3 | Determinar si el proyecto es viable en el tiempo elegido | 0.25d | 2019-01-25 15:59 | 2019-01-28 08:59 | 107, 106 | 2818.96d | Analista-Diseñador |
| 109 | 1.1.4 | **Obtención de una definición del sistema** | 1d | 2019-01-28 08:59 | 2019-01-29 08:59 | 88 | 2818.96d |  |
| 110 | 1.1.4.1 | **Especificación formal del sistema** | 0.4d | 2019-01-28 08:59 | 2019-01-28 13:11 |  | 2818.96d |  |
| 111 | 1.1.4.1.1 | **Diagrama de contexto** | 0.2d | 2019-01-28 08:59 | 2019-01-28 10:35 |  | 2818.96d |  |
| 112 | 1.2.4.1.1.1 | Dibujar el diagrama de contexto | 0.2d | 2019-01-28 08:59 | 2019-01-28 10:35 |  | 2818.96d | Analista-Programador |

| ID | WBS | Task | Duration | Start | Finish | Predecessors | Total slack | Resources |
| --- | --- | --- | --- | --- | --- | --- | --- | --- |
| 113 | 1.1.4.1.2 | **Diagrama de sistema** | 0.2d | 2019-01-28 10:35 | 2019-01-28 13:11 | 111 | 2818.96d |  |
| 114 | 1.2.4.1.2.1 | Dibujar el diagrama de sistema | 0.2d | 2019-01-28 10:35 | 2019-01-28 13:11 |  | 2818.96d | Analista-Programador |
| 115 | 1.1.4.2 | **Representación del sistema** | 0.6d | 2019-01-28 13:11 | 2019-01-29 08:59 | 110 | 2818.96d |  |
| 116 | 1.1.4.2.1 | **Diagramas de flujo de datos** | 0.2d | 2019-01-28 13:11 | 2019-01-28 14:47 |  | 2818.96d |  |
| 117 | 1.2.4.2.1.1 | Dibujar el diagrama de sistema | 0.2d | 2019-01-28 13:11 | 2019-01-28 14:47 |  | 2818.96d | Analista-Diseñador |
| 118 | 1.1.4.2.2 | **Diagramas de flujo de control** | 0.2d | 2019-01-28 14:47 | 2019-01-28 16:23 | 116 | 2818.96d |  |
| 119 | 1.2.4.2.2.1 | Dibujar el diagrama de sistema | 0.2d | 2019-01-28 14:47 | 2019-01-28 16:23 |  | 2818.96d | Analista-Diseñador |
| 120 | 1.1.4.2.3 | **Diagramas del ámbito de la información** | 0.2d | 2019-01-28 16:23 | 2019-01-29 08:59 | 118 | 2818.96d |  |
| 121 | 1.2.4.2.3.1 | Dibujar el diagrama de sistema | 0.2d | 2019-01-28 16:23 | 2019-01-29 08:59 |  | 2818.96d | Analista-Diseñador |
| 122 | 1.2 | **Análisis de requisitos del software** | 2.75d | 2019-01-30 09:29 | 2019-02-01 16:29 | 54 | 2712.66d |  |
| 123 | 1.2.1 | **Extracción o determinación de requisitos** | 0.5d | 2019-01-30 09:29 | 2019-01-30 14:29 |  | 2712.66d |  |
| 124 | 1.2.1.1 | **Documentos de reuniones con cliente** | 0.25d | 2019-01-30 09:29 | 2019-01-30 11:29 |  | 2712.66d |  |
| 125 | 1.3.1.1.1 | Realizar un acta de reunión para la reunión con el cliente | 0.12d | 2019-01-30 09:29 | 2019-01-30 10:29 | 18, 33 | 2712.66d | Analista-Diseñador |
| 126 | 1.3.1.1.2 | Realizar un informe sobre las solicitudes e información que se obtuvo del cliente | 0.12d | 2019-01-30 10:29 | 2019-01-30 11:29 | 125 | 2712.66d | Analista-Diseñador; Analista-Programador |
| 127 | 1.2.1.2 | **Especificación informal de requisitos software** | 0.25d | 2019-01-30 11:29 | 2019-01-30 14:29 | 124 | 2712.66d |  |
| 128 | 1.3.1.2.1 | Redactar un primer informe de los requisitos del software a partir del informe de reunión con el cliente | 0.25d | 2019-01-30 11:29 | 2019-01-30 14:29 |  | 2712.66d | Analista-Diseñador; Analista-Programador |
| 129 | 1.2.2 | **Análisis de requisitos** | 0.75d | 2019-01-30 14:29 | 2019-01-31 11:29 | 123 | 2712.66d |  |
| 130 | 1.2.2.1 | **Validación de especificación informal** | 0.12d | 2019-01-30 14:29 | 2019-01-30 15:29 |  | 2712.66d |  |
| 131 | 1.3.2.1.1 | Analizar especificación informal para posibles mejoras | 0.12d | 2019-01-30 14:29 | 2019-01-30 15:29 |  | 2712.66d | Analista-Diseñador |
| 132 | 1.3.2.1.2 | Buscar errores en la especificación informal | 0.12d | 2019-01-30 14:29 | 2019-01-30 15:29 |  | 2712.66d | Analista-Programador |
| 133 | 1.2.2.2 | **Resolución de inconsistencias** | 0.25d | 2019-01-30 15:29 | 2019-01-31 08:29 | 130 | 2712.66d |  |
| 134 | 1.3.2.2.1 | Corregir errores en la especificación informal | 0.25d | 2019-01-30 15:29 | 2019-01-31 08:29 |  | 2712.66d | Analista-Programador |
| 135 | 1.3.2.2.2 | Encontrar redundancias y discrepancias en la especificación informal | 0.25d | 2019-01-30 15:29 | 2019-01-31 08:29 |  | 2712.66d | Analista-Diseñador |
| 136 | 1.2.2.3 | **Coordinación de requisitos relacionados** | 0.38d | 2019-01-31 08:29 | 2019-01-31 11:29 | 133 | 2712.66d |  |
| 137 | 1.3.2.3.1 | Formar relaciones entre requisitos que tengan puntos comunes | 0.25d | 2019-01-31 08:29 | 2019-01-31 10:29 |  | 2712.66d | Analista-Diseñador; Analista-Programador |
| 138 | 1.3.2.3.2 | Purgar relaciones redundantes | 0.12d | 2019-01-31 10:29 | 2019-01-31 11:29 | 137 | 2712.66d | Analista-Diseñador; Analista-Programador |

| ID | WBS | Task | Duration | Start | Finish | Predecessors | Total slack | Resources |
| --- | --- | --- | --- | --- | --- | --- | --- | --- |
| 139 | 1.2.3 | **Especificación de requisitos** | 0.75d | 2019-01-31 11:29 | 2019-02-01 09:29 | 129 | 2712.66d |  |
| 140 | 1.2.3.1 | **Documento de especificación formal de requisitos** | 0.5d | 2019-01-31 11:29 | 2019-01-31 16:29 |  | 2712.66d |  |
| 141 | 1.3.3.1.1 | Redactar documento de requisitos formal | 0.5d | 2019-01-31 11:29 | 2019-01-31 16:29 |  | 2712.66d | Analista-Programador |
| 142 | 1.2.3.2 | **Revisión de documento de especificación formal** | 0.25d | 2019-01-31 16:29 | 2019-02-01 09:29 | 140 | 2712.66d |  |
| 143 | 1.3.3.2.1 | Revisar documento de requisitos formal en busca de errores | 0.12d | 2019-01-31 16:29 | 2019-02-01 08:29 |  | 2712.66d | Analista-Diseñador |
| 144 | 1.3.3.2.2 | Revisar documento de requisitos formal en busca de mejoras de formato y claridad | 0.12d | 2019-02-01 08:29 | 2019-02-01 09:29 | 143 | 2712.66d | Analista-Diseñador |
| 145 | 1.2.4 | **Validación de requisitos** | 0.75d | 2019-02-01 09:29 | 2019-02-01 16:29 | 139 | 2712.66d |  |
| 146 | 1.2.4.1 | **Reunión con cliente para validación de requisitos** | 0.25d | 2019-02-01 09:29 | 2019-02-01 11:29 |  | 2712.66d |  |
| 147 | 1.3.4.1.1 | Redactar acta de reunión con el cliente y validar requisitos | 0.25d | 2019-02-01 09:29 | 2019-02-01 11:29 |  | 2712.66d | Analista-Diseñador |
| 148 | 1.2.4.2 | **Corrección de especificación formal** | 0.25d | 2019-02-01 11:29 | 2019-02-01 14:29 | 146 | 2712.66d |  |
| 149 | 1.3.4.2.1 | Ajustar los requisitos a partir de la validación realizada | 0.25d | 2019-02-01 11:29 | 2019-02-01 14:29 |  | 2712.66d | Analista-Programador |
| 150 | 1.2.4.3 | **Validación de la especificación forma corregidsa** | 0.25d | 2019-02-01 14:29 | 2019-02-01 16:29 | 148 | 2712.66d |  |
| 151 | 1.3.4.3.1 | Reunirse con el cliente para realizar la validación final de requisitos | 0.25d | 2019-02-01 14:29 | 2019-02-01 16:29 |  | 2712.66d | Analista-Diseñador; Analista-Programador |
| 152 | 1.3 | **Diseño del sistema software** | 51.56d | 2019-01-01 09:00 | 2019-03-13 14:29 | 122 | 3595.89d |  |
| 153 | 1.3.1 | **Diseño funcional** | 6d | 2019-01-01 09:00 | 2019-01-09 09:00 |  | 2518.85d |  |
| 154 | 1.3.1.1 | **Diseño módulo del camarero** | 1d | 2019-01-01 09:00 | 2019-01-02 09:00 |  | 2518.85d |  |
| 155 | 1.4.1.1.1 | Realizar diseño del módulo | 1d | 2019-01-01 09:00 | 2019-01-02 09:00 |  | 2518.85d | Analista-Diseñador; Analista-Programador |
| 156 | 1.3.1.2 | **Diseño módulo de gestión de proveedores** | 1d | 2019-01-02 09:00 | 2019-01-03 09:00 | 154 | 2518.85d |  |
| 157 | 1.4.1.2.1 | Realizar diseño del módulo | 1d | 2019-01-02 09:00 | 2019-01-03 09:00 |  | 2518.85d | Analista-Diseñador; Analista-Programador |
| 158 | 1.3.1.3 | **Diseño módulo de cocinas/barras** | 1d | 2019-01-03 09:00 | 2019-01-04 09:00 | 156 | 2518.85d |  |
| 159 | 1.4.1.3.1 | Realizar diseño del módulo | 1d | 2019-02-01 16:29 | 2019-02-04 16:29 |  | 337.66d | Analista-Diseñador; Analista-Programador |
| 160 | 1.3.1.4 | **Diseño módulo para muestra de datos y comandas** | 1d | 2019-01-04 09:00 | 2019-01-07 09:00 | 158 | 2518.85d |  |
| 161 | 1.4.1.4.1 | Realizar diseño del módulo | 1d | 2019-01-04 09:00 | 2019-01-07 09:00 | 19 | 2518.85d | Analista-Diseñador; Analista-Programador |
| 162 | 1.3.1.5 | **Diseño módulo de entretenimiento** | 1d | 2019-01-07 09:00 | 2019-01-08 09:00 | 160 | 2518.85d |  |
| 163 | 1.4.1.5.1 | Realizar diseño del módulo | 1d | 2019-01-07 09:00 | 2019-01-08 09:00 |  | 2518.85d | Analista-Diseñador; Analista-Programador |

| ID | WBS | Task | Duration | Start | Finish | Predecessors | Total slack | Resources |
| --- | --- | --- | --- | --- | --- | --- | --- | --- |
| 164 | 1.3.1.6 | **Diseño módulo de monitorización general del sistema** | 1d | 2019-01-08 09:00 | 2019-01-09 09:00 | 162 | 2518.85d |  |
| 165 | 1.4.1.6.1 | Realizar diseño del módulo | 1d | 2019-01-08 09:00 | 2019-01-09 09:00 |  | 2518.85d | Analista-Diseñador; Analista-Programador |
| 166 | 1.3.2 | **Diseño técnico** | 31.88d | 2019-01-09 09:00 | 2019-02-22 08:00 | 153 | 250.05d |  |
| 167 | 1.3.2.1 | **Selección de tecnologías** | 26.81d | 2019-01-09 09:00 | 2019-02-14 16:29 |  | 268.85d |  |
| 168 | 1.3.2.1.1 | **Base de datos a usar** | 1.5d | 2019-01-09 09:00 | 2019-01-10 14:00 |  | 2518.85d |  |
| 169 | 1.4.2.1.1.1 | Comparar bases de datos disponibles | 1d | 2019-01-09 09:00 | 2019-01-10 09:00 |  | 2518.85d | Analista-Programador |
| 170 | 1.4.2.1.1.2 | Elegir la opción que mejor se adapte al proyecto | 0.5d | 2019-01-10 09:00 | 2019-01-10 14:00 | 169 | 2518.85d | Analista-Programador |
| 171 | 1.3.2.1.2 | **Sistema operativo y aplicaciones de las tablets** | 1.5d | 2019-02-12 09:29 | 2019-02-13 14:29 | 168 | 268.85d |  |
| 172 | 1.4.2.1.2.1 | Comparar los sistemas operativos disponibles | 1d | 2019-02-12 09:29 | 2019-02-13 09:29 | 20 | 268.85d | Analista-Programador |
| 173 | 1.4.2.1.2.2 | Elegir la opción que mejor se adapte al proyecto | 0.5d | 2019-02-13 09:29 | 2019-02-13 14:29 | 172 | 268.85d | Analista-Programador |
| 174 | 1.3.2.1.3 | **Lenguaje de programación y consultas SQL** | 1.25d | 2019-02-13 14:29 | 2019-02-14 16:29 | 171 | 268.85d |  |
| 175 | 1.4.2.1.3.1 | Analizar que lenguaje de programación y consultas SQL se adapta mejor a nuestra BD elegida | 1.25d | 2019-02-13 14:29 | 2019-02-14 16:29 |  | 268.85d | Analista-Programador; Programador Junior1 |
| 176 | 1.4.2.1.3.2 | Analizar que lenguaje se adapta mejor a las necesidades de la empresa | 1.25d | 2019-02-13 14:29 | 2019-02-14 16:29 |  | 268.85d | Analista-Programador; Programador Junior1 |
| 177 | 1.3.2.1.4 | **Interfaces de comunicación e interoperación con otras aplicaciones** | 1d | 2019-01-09 09:00 | 2019-01-10 09:00 |  | 2850.05d |  |
| 178 | 1.4.2.1.4.1 | Diseñar mediante diagramas y diseño informal las interfaces | 1d | 2019-01-09 09:00 | 2019-01-10 09:00 |  | 2850.05d | Analista-Diseñador |
| 179 | 1.3.2.2 | **Validación de tecnologías** | 5.06d | 2019-02-14 16:29 | 2019-02-22 08:00 | 167 | 250.05d |  |
| 180 | 1.3.2.2.1 | **Diseño de pruebas de rendimiento de las tecnologías** | 2d | 2019-02-14 16:29 | 2019-02-18 16:29 |  | 268.85d |  |
| 181 | 1.4.2.2.1.1 | Diseñar las pruebas de rendimiento | 2d | 2019-02-14 16:29 | 2019-02-18 16:29 |  | 268.85d | Analista-Diseñador |
| 182 | 1.3.2.2.2 | **Diseño de pruebas de coste de las tecnologías** | 2.81d | 2019-02-19 09:29 | 2019-02-22 08:00 | 180 | 250.05d |  |
| 183 | 1.4.2.2.2.1 | Diseñar las pruebas de coste | 2.81d | 2019-02-19 09:29 | 2019-02-22 08:00 | 21 | 250.05d | Analista-Diseñador |
| 184 | 1.3.3 | **Diseño de pruebas** | 10.56d | 2019-02-22 08:00 | 2019-03-08 13:30 | 166 | 250.05d |  |
| 185 | 1.3.3.1 | **Diseño de pruebas de aceptación** | 3.19d | 2019-02-22 08:00 | 2019-02-27 09:29 |  | 837.66d |  |
| 186 | 1.3.3.1.1 | **Diseño de pruebas para los gerentes del local** | 1.5d | 2019-02-22 08:00 | 2019-02-25 13:00 |  | 856.25d |  |
| 187 | 1.4.3.1.1.1 | Redactar informe de los minimos que deben cubrir las pruebas | 0.5d | 2019-02-22 08:00 | 2019-02-22 13:00 |  | 856.25d | Analista-Diseñador |
| 188 | 1.4.3.1.1.2 | Diseñar las pruebas basandose en los informes | 1d | 2019-02-22 13:00 | 2019-02-25 13:00 | 187 | 856.25d | Analista-Diseñador |

| ID | WBS | Task | Duration | Start | Finish | Predecessors | Total slack | Resources |
| --- | --- | --- | --- | --- | --- | --- | --- | --- |
| 189 | 1.3.3.1.2 | **Diseño de pruebas sobre el personal del local** | 1.5d | 2019-02-22 08:00 | 2019-02-25 13:00 |  | 250.05d |  |
| 190 | 1.4.3.1.2.1 | Redactar informe de los minimos que deben cubrir las pruebas | 0.5d | 2019-02-22 08:00 | 2019-02-22 13:00 |  | 250.05d | Analista-Programador |
| 191 | 1.4.3.1.2.2 | Diseñar las pruebas basandose en los informes | 1d | 2019-02-22 13:00 | 2019-02-25 13:00 | 190 | 250.05d | Analista-Programador |
| 192 | 1.3.3.1.3 | **Diseño de pruebas sobre los usuarios del local** | 1.5d | 2019-02-22 08:00 | 2019-02-25 13:00 |  | 1006.25d |  |
| 193 | 1.4.3.1.3.1 | Redactar informe de los minimos que deben cubrir las pruebas | 0.5d | 2019-02-22 08:00 | 2019-02-22 13:00 |  | 1006.25d | Programador Junior1; Programador Junior2 |
| 194 | 1.4.3.1.3.2 | Diseñar las pruebas basandose en los informes | 1d | 2019-02-22 13:00 | 2019-02-25 13:00 | 193 | 1006.25d | Programador Junior1; Programador Junior2 |
| 195 | 1.3.3.1.4 | **Diseño de pruebas para los proveedores** | 1.69d | 2019-02-25 13:00 | 2019-02-27 09:29 | 186 | 837.66d |  |
| 196 | 1.4.3.1.4.1 | Redactar informe de los minimos que deben cubrir las pruebas | 0.5d | 2019-02-25 13:00 | 2019-02-26 08:00 |  | 856.25d | Analista-Diseñador |
| 197 | 1.4.3.1.4.2 | Diseñar las pruebas basandose en los informes | 1d | 2019-02-26 09:29 | 2019-02-27 09:29 | 22, 196 | 837.66d | Analista-Diseñador |
| 198 | 1.3.3.2 | **Diseño de pruebas del sistema** | 3.19d | 2019-02-25 13:00 | 2019-02-28 14:29 |  | 837.66d |  |
| 199 | 1.3.3.2.1 | **Diseño de pruebas para comunicación con PayPal** | 1.5d | 2019-02-25 13:00 | 2019-02-27 08:00 | 189 | 250.05d |  |
| 200 | 1.4.3.2.1.1 | Redactar informe de los minimos que deben cubrir las pruebas | 0.5d | 2019-02-25 13:00 | 2019-02-26 08:00 |  | 250.05d | Analista-Programador |
| 201 | 1.4.3.2.1.2 | Diseñar las pruebas basandose en los informes | 1d | 2019-02-26 08:00 | 2019-02-27 08:00 | 200 | 250.05d | Analista-Programador |
| 202 | 1.3.3.2.2 | **Diseño de pruebas para comunicación con terminales TPV** | 1.5d | 2019-02-25 13:00 | 2019-02-27 08:00 | 192 | 1006.25d |  |
| 203 | 1.4.3.2.2.1 | Redactar informe de los minimos que deben cubrir las pruebas | 0.5d | 2019-02-25 13:00 | 2019-02-26 08:00 |  | 1006.25d | Programador Junior1; Programador Junior2 |
| 204 | 1.4.3.2.2.2 | Diseñar las pruebas basandose en los informes | 1d | 2019-02-26 08:00 | 2019-02-27 08:00 | 203 | 1006.25d | Programador Junior1; Programador Junior2 |
| 205 | 1.3.3.2.3 | **Diseño de pruebas para comunicación con tablets del local** | 1.5d | 2019-02-27 09:29 | 2019-02-28 14:29 | 195 | 837.66d |  |
| 206 | 1.4.3.2.3.1 | Redactar informe de los minimos que deben cubrir las pruebas | 0.5d | 2019-02-27 09:29 | 2019-02-27 14:29 |  | 837.66d | Analista-Diseñador |
| 207 | 1.4.3.2.3.2 | Diseñar las pruebas basandose en los informes | 1d | 2019-02-27 14:29 | 2019-02-28 14:29 | 206 | 837.66d | Analista-Diseñador |
| 208 | 1.3.3.3 | **Diseño de pruebas de integración** | 1.5d | 2019-02-27 08:00 | 2019-02-28 13:00 |  | 250.05d |  |
| 209 | 1.3.3.3.1 | **Diseño de pruebas para comunicación entre módulos** | 1.5d | 2019-02-27 08:00 | 2019-02-28 13:00 | 199 | 250.05d |  |
| 210 | 1.4.3.3.1.1 | Redactar informe de los minimos que deben cubrir las pruebas | 0.5d | 2019-02-27 08:00 | 2019-02-27 13:00 |  | 250.05d | Analista-Programador |
| 211 | 1.4.3.3.1.2 | Diseñar las pruebas basandose en los informes | 1d | 2019-02-27 13:00 | 2019-02-28 13:00 | 210 | 250.05d | Analista-Programador |
| 212 | 1.3.3.4 | **Diseño de pruebas de unidad** | 6.06d | 2019-02-28 13:00 | 2019-03-08 13:30 | 208 | 250.05d |  |
| 213 | 1.3.3.4.1 | **Diseño de pruebas de módulo de monitorización general del sistema** | 1.5d | 2019-02-28 13:00 | 2019-03-04 08:00 |  | 250.05d |  |
| 214 | 1.4.3.4.1.1 | Redactar informe de los minimos que deben cubrir las pruebas | 0.5d | 2019-02-28 13:00 | 2019-03-01 08:00 |  | 250.05d | Analista-Diseñador |
| 215 | 1.4.3.4.1.2 | Diseñar las pruebas basandose en los informes | 1d | 2019-03-01 08:00 | 2019-03-04 08:00 | 214 | 250.05d | Analista-Diseñador |

| ID | WBS | Task | Duration | Start | Finish | Predecessors | Total slack | Resources |
| --- | --- | --- | --- | --- | --- | --- | --- | --- |
| 216 | 1.3.3.4.2 | **Diseño de pruebas de módulo de entretenimiento** | 1.5d | 2019-03-04 08:00 | 2019-03-05 13:00 | 213 | 250.05d |  |
| 217 | 1.4.3.4.2.1 | Redactar informe de los minimos que deben cubrir las pruebas | 0.5d | 2019-03-04 08:00 | 2019-03-04 13:00 |  | 250.05d | Analista-Diseñador |
| 218 | 1.4.3.4.2.2 | Diseñar las pruebas basandose en los informes | 1d | 2019-03-04 13:00 | 2019-03-05 13:00 | 217 | 250.05d | Analista-Diseñador |
| 219 | 1.3.3.4.3 | **Diseño de pruebas de módulo para muestra de datos y comandas** | 1.5d | 2019-03-05 13:30 | 2019-03-07 08:30 |  | 250.05d |  |
| 220 | 1.4.3.4.3.1 | Redactar informe de los minimos que deben cubrir las pruebas | 0.5d | 2019-03-05 13:30 | 2019-03-06 08:30 | 23 | 250.05d | Analista-Programador |
| 221 | 1.4.3.4.3.2 | Diseñar las pruebas basandose en los informes | 1d | 2019-03-06 08:30 | 2019-03-07 08:30 | 220 | 250.05d | Analista-Programador |
| 222 | 1.3.3.4.4 | **Diseño de pruebas de módulo de gestión de proveedores** | 1.5d | 2019-03-07 08:30 | 2019-03-08 13:30 | 219 | 250.05d |  |
| 223 | 1.4.3.4.4.1 | Redactar informe de los minimos que deben cubrir las pruebas | 0.5d | 2019-03-07 08:30 | 2019-03-07 13:30 |  | 250.05d | Analista-Programador |
| 224 | 1.4.3.4.4.2 | Diseñar las pruebas basandose en los informes | 1d | 2019-03-07 13:30 | 2019-03-08 13:30 | 223 | 250.05d | Analista-Programador |
| 225 | 1.3.3.4.5 | **Diseño de pruebas de módulo del camarero** | 1.5d | 2019-02-28 13:00 | 2019-03-04 08:00 |  | 556.25d |  |
| 226 | 1.4.3.4.5.1 | Redactar informe de los minimos que deben cubrir las pruebas | 0.5d | 2019-02-28 13:00 | 2019-03-01 08:00 |  | 556.25d | Programador Junior1; Programador Junior2 |
| 227 | 1.4.3.4.5.2 | Diseñar las pruebas basandose en los informes | 1d | 2019-03-01 08:00 | 2019-03-04 08:00 | 226 | 556.25d | Programador Junior1; Programador Junior2 |
| 228 | 1.3.3.4.6 | **Diseño de pruebas del módulo de cocinas/barra** | 1.5d | 2019-03-04 08:00 | 2019-03-05 13:00 | 225 | 556.25d |  |
| 229 | 1.4.3.4.6.1 | Redactar informe de los minimos que deben cubrir las pruebas | 0.5d | 2019-03-04 08:00 | 2019-03-04 13:00 |  | 556.25d | Programador Junior1; Programador Junior2 |
| 230 | 1.4.3.4.6.2 | Diseñar las pruebas basandose en los informes | 1d | 2019-03-04 13:00 | 2019-03-05 13:00 | 229 | 556.25d | Programador Junior1; Programador Junior2 |
| 231 | 1.3.4 | **Planificación** | 3.12d | 2019-03-08 13:30 | 2019-03-13 14:29 | 184 | 237.66d |  |
| 232 | 1.3.4.1 | **Revisión de la planificación** | 2.62d | 2019-03-08 13:30 | 2019-03-13 09:29 |  | 237.66d |  |
| 233 | 1.4.4.1.1 | Revisar que la planificación se ajuste al tiempo adecuado | 1.5d | 2019-03-08 13:30 | 2019-03-12 08:30 |  | 250.05d | Analista-Programador |
| 234 | 1.4.4.1.2 | Revisar que la planificación se ajuste adecuadamente a nuestros recursos | 1d | 2019-03-12 09:29 | 2019-03-13 09:29 | 24, 233 | 237.66d | Analista-Programador |
| 235 | 1.3.4.2 | **Validación de la planificación** | 0.5d | 2019-03-13 09:29 | 2019-03-13 14:29 | 232 | 237.66d |  |
| 236 | 1.4.4.2.1 | Reunirse con el jefe para validar la planificación revisada, incluye informe semanal | 0.5d | 2019-03-13 09:29 | 2019-03-13 14:29 |  | 237.66d | Analista-Programador; Director de proyecto |
| 237 | 1.4 | **Codificación del sistema** | 20.81d | 2019-03-13 14:29 | 2019-04-11 11:59 | 152 | 12.66d |  |
| 238 | 1.4.1 | **Ambiente de desarrollo** | 6.25d | 2019-03-13 14:29 | 2019-03-21 16:29 |  | 237.66d |  |
| 239 | 1.4.1.1 | **Instalación del entorno de trabajo** | 2d | 2019-03-13 14:29 | 2019-03-15 14:29 |  | 237.66d |  |
| 240 | 1.4.1.1.1 | **Selección de tecnologías** | 0.5d | 2019-03-13 14:29 | 2019-03-14 09:29 |  | 237.66d |  |
| 241 | 1.5.1.1.1.1 | Seleccionar las tecnologías basandose en la fase de análisis | 0.5d | 2019-03-13 14:29 | 2019-03-14 09:29 |  | 237.66d | Analista-Diseñador |

| ID | WBS | Task | Duration | Start | Finish | Predecessors | Total slack | Resources |
| --- | --- | --- | --- | --- | --- | --- | --- | --- |
| 242 | 1.4.1.1.2 | **Adquisición de tecnologías** | 0.5d | 2019-03-14 09:29 | 2019-03-14 14:29 | 240 | 237.66d |  |
| 243 | 1.5.1.1.2.1 | Realizar la compra de licencias de software de empresa | 0.5d | 2019-03-14 09:29 | 2019-03-14 14:29 |  | 237.66d | Director de proyecto |
| 244 | 1.5.1.1.2.2 | Comprar el hardware necesario | 0.5d | 2019-03-14 09:29 | 2019-03-14 14:29 |  | 237.66d | Analista-Programador |
| 245 | 1.4.1.1.3 | **Instalación en ordenadores locales** | 1d | 2019-03-14 14:29 | 2019-03-15 14:29 | 242 | 237.66d |  |
| 246 | 1.5.1.1.3.1 | Instalar el software adquirido en los ordenadores locales | 1d | 2019-03-14 14:29 | 2019-03-15 14:29 |  | 237.66d | Analista-Programador |
| 247 | 1.4.1.2 | **Configuración del entorno de trabajo** | 2d | 2019-03-15 14:29 | 2019-03-19 14:29 | 239 | 237.66d |  |
| 248 | 1.4.1.2.1 | **Ajuste de propiedades generales** | 2d | 2019-03-15 14:29 | 2019-03-19 14:29 |  | 237.66d |  |
| 249 | 1.5.1.2.1.1 | Configurar el SO y programas básico de uso general | 2d | 2019-03-15 14:29 | 2019-03-19 14:29 |  | 237.66d | Director de proyecto |
| 250 | 1.4.1.2.2 | **Ajuste de propiedades específicas** | 2d | 2019-03-15 14:29 | 2019-03-19 14:29 |  | 237.66d |  |
| 251 | 1.5.1.2.2.1 | Preparar el software específico en los equipos de personal especializado | 2d | 2019-03-15 14:29 | 2019-03-19 14:29 | 25 | 237.66d | Programador Junior1; Programador Junior2 |
| 252 | 1.4.1.3 | **Revisiones de eficiencia y velocidad del entorno** | 2.25d | 2019-03-19 14:29 | 2019-03-21 16:29 | 247 | 237.66d |  |
| 253 | 1.4.1.3.1 | **Evaluación de eficiencia y velocidad** | 1d | 2019-03-19 14:29 | 2019-03-20 14:29 |  | 237.66d |  |
| 254 | 1.5.1.3.1.1 | Realizar evaluación de eficiencia y velocidad durante la preparación de los ordenadores | 1d | 2019-03-19 14:29 | 2019-03-20 14:29 |  | 237.66d | Programador Junior1 |
| 255 | 1.4.1.3.2 | **Reconfiguración de tecnologías o herramientas** | 1d | 2019-03-20 14:29 | 2019-03-21 14:29 | 253 | 237.66d |  |
| 256 | 1.5.1.3.2.1 | Ajustar las configuraciones iniciales basándose en las evaluaciones | 1d | 2019-03-20 14:29 | 2019-03-21 14:29 |  | 237.66d | Programador Junior2 |
| 257 | 1.4.1.3.3 | **Selección parcial de otras herramientas** | 0.25d | 2019-03-21 14:29 | 2019-03-21 16:29 | 255 | 237.66d |  |
| 258 | 1.5.1.3.3.1 | Cubrir problemas encontrados con las herramientas de terceros necesarias | 0.25d | 2019-03-21 14:29 | 2019-03-21 16:29 |  | 237.66d | Programador Junior1; Programador Junior2 |
| 259 | 1.4.2 | **Módulos** | 10.31d | 2019-03-21 16:29 | 2019-04-05 09:59 | 238 | 12.66d |  |
| 260 | 1.4.2.1 | **Módulo del camarero** | 4.75d | 2019-03-21 16:29 | 2019-03-28 14:29 |  | 568.85d |  |
| 261 | 1.4.2.1.1 | **Almacén de datos de camareros** | 2.5d | 2019-03-26 09:29 | 2019-03-28 14:29 |  | 12.66d |  |
| 262 | 1.5.2.1.1.1 | Preparar la BD y funciones para uso de camareros | 2.5d | 2019-03-26 09:29 | 2019-03-28 14:29 | 26 | 12.66d | Programador Senior |
| 263 | 1.4.2.1.2 | **Función de comunicar llamadas al camarero** | 1d | 2019-03-21 16:29 | 2019-03-22 16:29 |  | 943.85d |  |
| 264 | 1.5.2.1.2.1 | Implementar la función de llamadas al camararero mediante la interfaz diseñada | 1d | 2019-03-21 16:29 | 2019-03-22 16:29 |  | 943.85d | Programador Junior1 |
| 265 | 1.4.2.1.3 | **Función de liberar una mesa ocupada** | 1d | 2019-03-21 16:29 | 2019-03-22 16:29 |  | 943.85d |  |
| 266 | 1.5.2.1.3.1 | Implementar la función que permite liberar mesas a camareros | 1d | 2019-03-21 16:29 | 2019-03-22 16:29 |  | 943.85d | Programador Junior2 |

| ID | WBS | Task | Duration | Start | Finish | Predecessors | Total slack | Resources |
| --- | --- | --- | --- | --- | --- | --- | --- | --- |
| 267 | 1.4.2.1.4 | **Interfaz visual agradable** | 0.5d | 2019-03-21 16:29 | 2019-03-22 11:29 |  | 993.85d |  |
| 268 | 1.5.2.1.4.1 | Programar la interfaz visual | 0.5d | 2019-03-21 16:29 | 2019-03-22 11:29 |  | 993.85d | Analista-Diseñador; Analista-Programador |
| 269 | 1.4.2.2 | **Módulo de gestión de proveedores** | 5.75d | 2019-03-21 16:29 | 2019-03-29 14:29 |  | 12.66d |  |
| 270 | 1.4.2.2.1 | **Almacén de stock** | 1d | 2019-03-28 14:29 | 2019-03-29 14:29 | 261 | 12.66d |  |
| 271 | 1.5.2.2.1.1 | Programar el gestor de stock y conectarlo a la BD | 1d | 2019-03-28 14:29 | 2019-03-29 14:29 |  | 12.66d | Programador Senior |
| 272 | 1.4.2.2.2 | **Interfaz visual agradable** | 0.5d | 2019-03-21 16:29 | 2019-03-22 11:29 |  | 537.66d |  |
| 273 | 1.5.2.2.2.1 | Programar la interfaz visual | 0.5d | 2019-03-21 16:29 | 2019-03-22 11:29 |  | 537.66d | Analista-Diseñador; Analista-Programador |
| 274 | 1.4.2.3 | **Módulo de cocinas/barra** | 2.25d | 2019-03-21 16:29 | 2019-03-26 09:29 |  | 362.66d |  |
| 275 | 1.4.2.3.1 | **Función de cobrar con tarjeta u otros métodos** | 2d | 2019-03-21 16:29 | 2019-03-25 16:29 |  | 387.66d |  |
| 276 | 1.5.2.3.1.1 | Programar funciones de cobro | 1.5d | 2019-03-21 16:29 | 2019-03-25 11:29 |  | 387.66d | Programador Junior1 |
| 277 | 1.5.2.3.1.2 | Adaptar funciones de cobro a todos los métodos de pago | 0.5d | 2019-03-25 11:29 | 2019-03-25 16:29 | 276 | 387.66d | Programador Junior1 |
| 278 | 1.4.2.3.2 | **Función de proteger los datos de las transacciones** | 1.5d | 2019-03-21 16:29 | 2019-03-25 11:29 |  | 437.66d |  |
| 279 | 1.5.2.3.2.1 | Asegurarse de que se guardan apropiadamente los datos | 0.5d | 2019-03-21 16:29 | 2019-03-22 11:29 |  | 437.66d | Programador Junior2 |
| 280 | 1.5.2.3.2.2 | Proteger mediante encriptación o restricciones de acceso los datos | 1d | 2019-03-22 11:29 | 2019-03-25 11:29 | 279 | 437.66d | Programador Junior2 |
| 281 | 1.4.2.3.3 | **Almacén de datos de comandas** | 2d | 2019-03-21 16:29 | 2019-03-25 16:29 |  | 362.66d |  |
| 282 | 1.5.2.3.3.1 | Programar el almacen de datos de pedidos | 2d | 2019-03-21 16:29 | 2019-03-25 16:29 |  | 362.66d | Programador Junior1; Programador Junior2 |
| 283 | 1.4.2.3.4 | **Almacén de datos de mesas** | 0.25d | 2019-03-25 16:29 | 2019-03-26 09:29 | 281 | 362.66d |  |
| 284 | 1.5.2.3.4.1 | Adaptar el almacén de datos de pedidos a las mesas | 0.25d | 2019-03-25 16:29 | 2019-03-26 09:29 | 282 | 362.66d | Programador Junior1; Programador Junior2 |
| 285 | 1.4.2.4 | **Módulo para muestra de datos y comandas** | 4.56d | 2019-03-29 14:29 | 2019-04-05 09:59 | 269, 274 | 12.66d |  |
| 286 | 1.4.2.4.1 | **Función de seleccionar productos y pedidos** | 2d | 2019-03-29 14:29 | 2019-04-02 14:29 |  | 12.66d |  |
| 287 | 1.5.2.4.1.1 | Implementar navegación de menú | 2d | 2019-03-29 14:29 | 2019-04-02 14:29 |  | 12.66d | Programador Senior |
| 288 | 1.4.2.4.2 | **Función de plasmar información del pedido** | 1d | 2019-04-02 14:59 | 2019-04-03 14:59 |  | 12.66d |  |
| 289 | 1.5.2.4.2.1 | Implementar función de información de pedido | 1d | 2019-04-02 14:59 | 2019-04-03 14:59 | 27 | 12.66d | Programador Junior1 |
| 290 | 1.4.2.4.3 | **Función de enviar la comanda** | 1d | 2019-03-29 14:29 | 2019-04-01 14:29 |  | 343.85d |  |
| 291 | 1.5.2.4.3.1 | Imlementar función de envio de comanda | 1d | 2019-03-29 14:29 | 2019-04-01 14:29 |  | 343.85d | Programador Junior2 |

| ID | WBS | Task | Duration | Start | Finish | Predecessors | Total slack | Resources |
| --- | --- | --- | --- | --- | --- | --- | --- | --- |
| 292 | 1.4.2.4.4 | **Función de reservar mesa libre** | 1d | 2019-03-29 14:29 | 2019-04-01 14:29 |  | 368.85d |  |
| 293 | 1.5.2.4.4.1 | Implementar función de reserva | 1d | 2019-03-29 14:29 | 2019-04-01 14:29 |  | 368.85d | Analista-Programador |
| 294 | 1.4.2.4.5 | **Función de ver estado de la mesa** | 1d | 2019-04-02 14:29 | 2019-04-03 14:29 |  | 168.85d |  |
| 295 | 1.5.2.4.5.1 | Implementar función de estado | 1d | 2019-04-02 14:29 | 2019-04-03 14:29 | 287 | 168.85d | Programador Senior |
| 296 | 1.4.2.4.6 | **Función de informar al cliente** | 1.5d | 2019-04-03 14:59 | 2019-04-05 09:59 |  | 12.66d |  |
| 297 | 1.5.2.4.6.1 | Adaptar función de comunicación para el cliente | 1.5d | 2019-04-03 14:59 | 2019-04-05 09:59 | 289 | 12.66d | Programador Junior1 |
| 298 | 1.4.2.4.7 | **Función de códigos QR** | 0.25d | 2019-04-01 14:29 | 2019-04-01 16:29 |  | 343.85d |  |
| 299 | 1.5.2.4.7.1 | Adaptar el lector QR a nuestros programas | 0.25d | 2019-04-01 14:29 | 2019-04-01 16:29 | 291 | 343.85d | Programador Junior2 |
| 300 | 1.4.2.4.8 | **Interfaz visual agradable** | 0.25d | 2019-03-29 14:29 | 2019-03-29 16:29 |  | 443.85d |  |
| 301 | 1.5.2.4.8.1 | Programar la interfaz visual | 0.25d | 2019-03-29 14:29 | 2019-03-29 16:29 |  | 443.85d | Analista-Diseñador; Analista-Programador |
| 302 | 1.4.2.5 | **Módulo de entretenimiento** | 2d | 2019-03-21 16:29 | 2019-03-25 16:29 |  | 743.85d |  |
| 303 | 1.4.2.5.1 | **Función de ofrecer entretenimiento al cliente** | 0.12d | 2019-03-21 16:29 | 2019-03-22 08:29 |  | 781.35d |  |
| 304 | 1.5.2.5.1.1 | Asegurar que los programas adecuados están instalados y son accesibles | 0.12d | 2019-03-21 16:29 | 2019-03-22 08:29 |  | 781.35d | Programador Junior1 |
| 305 | 1.4.2.5.2 | **Función de interactuar con el local** | 2d | 2019-03-21 16:29 | 2019-03-25 16:29 |  | 743.85d |  |
| 306 | 1.5.2.5.2.1 | Preparar conexiones visuales de camaras | 0.5d | 2019-03-22 08:29 | 2019-03-22 13:29 | 304 | 781.35d | Programador Junior1 |
| 307 | 1.5.2.5.2.2 | Preparar lista de música | 0.06d | 2019-03-21 16:29 | 2019-03-21 16:59 |  | 837.6d | Programador Junior2 |
| 308 | 1.5.2.5.2.3 | Preparar programa de control de interacción | 1d | 2019-03-21 16:29 | 2019-03-22 16:29 |  | 743.85d | Analista-Programador |
| 309 | 1.5.2.5.2.4 | Completar programa de control de interacción con los módulos | 1d | 2019-03-22 16:29 | 2019-03-25 16:29 | 308, 307, 306 | 743.85d | Programador Senior |
| 310 | 1.4.2.5.3 | **Interfaz visual agradable** | 0.5d | 2019-03-21 16:29 | 2019-03-22 11:29 |  | 893.85d |  |
| 311 | 1.5.2.5.3.1 | Programar interfaz visual | 0.5d | 2019-03-21 16:29 | 2019-03-22 11:29 |  | 893.85d | Analista-Diseñador; Analista-Programador |
| 312 | 1.4.2.6 | **Módulo de monitorización general y gerencia** | 1d | 2019-03-25 16:29 | 2019-03-26 16:29 | 302 | 743.85d |  |
| 313 | 1.4.2.6.1 | **Almacén de datos legales** | 1d | 2019-03-25 16:29 | 2019-03-26 16:29 |  | 743.85d |  |
| 314 | 1.5.2.6.1.1 | Preparar BD y gestión de BD | 1d | 2019-03-25 16:29 | 2019-03-26 16:29 |  | 743.85d | Programador Junior1 |
| 315 | 1.5.2.6.1.2 | Revisar cumplimiento de requerimientos legales de la BD | 0.25d | 2019-03-25 16:29 | 2019-03-26 09:29 |  | 818.85d | Programador Senior |

| ID | WBS | Task | Duration | Start | Finish | Predecessors | Total slack | Resources |
| --- | --- | --- | --- | --- | --- | --- | --- | --- |
| 316 | 1.4.2.6.2 | **Almacén de nóminas** | 1d | 2019-03-25 16:29 | 2019-03-26 16:29 |  | 743.85d |  |
| 317 | 1.5.2.6.2.1 | Preparar BD y gestión de BD para nóminas | 1d | 2019-03-25 16:29 | 2019-03-26 16:29 |  | 743.85d | Programador Junior2 |
| 318 | 1.5.2.6.2.2 | Automatizar las nóminas y su almacenamiento de datos | 1d | 2019-03-25 16:29 | 2019-03-26 16:29 |  | 743.85d | Analista-Programador |
| 319 | 1.4.2.6.3 | **Interfaz visual agrdable** | 0.5d | 2019-03-25 16:29 | 2019-03-26 11:29 |  | 793.85d |  |
| 320 | 1.5.2.6.3.1 | Programar la interfaz visual | 0.5d | 2019-03-25 16:29 | 2019-03-26 11:29 |  | 793.85d | Analista-Diseñador; Analista-Programador |
| 321 | 1.4.3 | **Depuración** | 4.25d | 2019-04-05 09:59 | 2019-04-11 11:59 | 259 | 12.66d |  |
| 322 | 1.4.3.1 | **Localización de defectos** | 0.69d | 2019-04-05 09:59 | 2019-04-05 16:29 |  | 12.66d |  |
| 323 | 1.4.3.1.1 | **Listado de defectos** | 0.5d | 2019-04-05 09:59 | 2019-04-05 14:59 |  | 12.66d |  |
| 324 | 1.5.3.1.1.1 | Realizar un listado intensivo de defectos encontrados en la codificación | 0.5d | 2019-04-05 09:59 | 2019-04-05 14:59 |  | 12.66d | Programador Senior |
| 325 | 1.4.3.1.2 | **Ubicación de defectos** | 0.19d | 2019-04-05 14:59 | 2019-04-05 16:29 | 323 | 12.66d |  |
| 326 | 1.5.3.1.2.1 | Completar listado con posiciones exactas (linea, programa, módulo, etc) de los errores | 0.06d | 2019-04-05 14:59 | 2019-04-05 15:29 |  | 12.66d | Programador Senior |
| 327 | 1.5.3.1.2.2 | Incluir en listado posibles relaciones del error con otro módulo o trozo de código | 0.12d | 2019-04-05 15:29 | 2019-04-05 16:29 | 326 | 12.66d | Programador Senior |
| 328 | 1.4.3.2 | **Corrección de defectos** | 3.56d | 2019-04-05 16:29 | 2019-04-11 11:59 | 322 | 12.66d |  |
| 329 | 1.4.3.2.1 | **Modificaciones necesarias** | 2.5d | 2019-04-05 16:29 | 2019-04-10 11:29 |  | 12.66d |  |
| 330 | 1.5.3.2.1.1 | Implementar las modificaciones y arreglos de la codificación | 2.5d | 2019-04-05 16:29 | 2019-04-10 11:29 |  | 12.66d | Analista-Programador; Programador Junior1; Programador Junior2; Programador Senior |
| 331 | 1.4.3.2.2 | **Revisión de corrección del defecto** | 1d | 2019-04-10 11:59 | 2019-04-11 11:59 | 329 | 12.66d |  |
| 332 | 1.5.3.2.2.1 | Revisar todos los errores del listado para comprobar que han sido arreglados correctamente | 1d | 2019-04-10 11:59 | 2019-04-11 11:59 | 28 | 12.66d | Programador Senior |
| 333 | 1.5 | **Pruebas del sistema y sus componentes** | 15.21d | 2019-04-11 11:59 | 2019-05-02 14:39 | 237 |  |  |
| 334 | 1.5.1 | **Planificación de pruebas** | 2.5d | 2019-04-11 11:59 | 2019-04-15 16:59 |  | 12.66d |  |
| 335 | 1.5.1.1 | **Pruebas de aceptación** | 0.5d | 2019-04-11 11:59 | 2019-04-11 16:59 |  | 12.66d |  |
| 336 | 1.5.1.1.1 | **Pruebas para los gerentes de local** | 0.5d | 2019-04-11 11:59 | 2019-04-11 16:59 |  | 12.66d |  |
| 337 | 1.6.1.1.1.1 | Planear las pruebas basándose en su diseño | 0.5d | 2019-04-11 11:59 | 2019-04-11 16:59 |  | 12.66d | Programador Junior1 |
| 338 | 1.5.1.1.2 | **Pruebas sobre el personal de local** | 0.5d | 2019-04-11 11:59 | 2019-04-11 16:59 |  | 12.66d |  |
| 339 | 1.6.1.1.2.1 | Planear las pruebas basándose en su diseño | 0.5d | 2019-04-11 11:59 | 2019-04-11 16:59 |  | 12.66d | Programador Junior2 |

| ID | WBS | Task | Duration | Start | Finish | Predecessors | Total slack | Resources |
| --- | --- | --- | --- | --- | --- | --- | --- | --- |
| 340 | 1.5.1.1.3 | **Pruebas sobre los usuarios del local** | 0.5d | 2019-04-11 11:59 | 2019-04-11 16:59 |  | 12.66d |  |
| 341 | 1.6.1.1.3.1 | Planear las pruebas basándose en su diseño | 0.5d | 2019-04-11 11:59 | 2019-04-11 16:59 |  | 12.66d | Programador Senior |
| 342 | 1.5.1.1.4 | **Pruebas para los proveedores** | 0.5d | 2019-04-11 11:59 | 2019-04-11 16:59 |  | 12.66d |  |
| 343 | 1.6.1.1.4.1 | Planear las pruebas basándose en su diseño | 0.5d | 2019-04-11 11:59 | 2019-04-11 16:59 |  | 12.66d | Analista-Diseñador |
| 344 | 1.5.1.2 | **Pruebas del sistema** | 0.5d | 2019-04-11 16:59 | 2019-04-12 11:59 | 335 | 12.66d |  |
| 345 | 1.5.1.2.1 | **Pruebas para comunicación con PayPal** | 0.5d | 2019-04-11 16:59 | 2019-04-12 11:59 |  | 12.66d |  |
| 346 | 1.6.1.2.1.1 | Planear las pruebas basándose en su diseño | 0.5d | 2019-04-11 16:59 | 2019-04-12 11:59 |  | 12.66d | Programador Junior1 |
| 347 | 1.5.1.2.2 | **Pruebas para comunicación con terminales TPV** | 0.5d | 2019-04-11 16:59 | 2019-04-12 11:59 |  | 12.66d |  |
| 348 | 1.6.1.2.2.1 | Planear las pruebas basándose en su diseño | 0.5d | 2019-04-11 16:59 | 2019-04-12 11:59 |  | 12.66d | Programador Junior2 |
| 349 | 1.5.1.2.3 | **Pruebas para comunicación con tablets de local** | 0.5d | 2019-04-11 16:59 | 2019-04-12 11:59 |  | 12.66d |  |
| 350 | 1.6.1.2.3.1 | Planear las pruebas basándose en su diseño | 0.5d | 2019-04-11 16:59 | 2019-04-12 11:59 |  | 12.66d | Programador Senior |
| 351 | 1.5.1.3 | **Pruebas de integración** | 0.5d | 2019-04-12 11:59 | 2019-04-12 16:59 | 344 | 12.66d |  |
| 352 | 1.5.1.3.1 | **Pruebas para comunicación entre módulos** | 0.5d | 2019-04-12 11:59 | 2019-04-12 16:59 |  | 12.66d |  |
| 353 | 1.6.1.3.1.1 | Planear las pruebas basándose en su diseño | 0.5d | 2019-04-12 11:59 | 2019-04-12 16:59 |  | 12.66d | Programador Senior |
| 354 | 1.5.1.4 | **Pruebas de unidad** | 1d | 2019-04-12 16:59 | 2019-04-15 16:59 | 351 | 12.66d |  |
| 355 | 1.5.1.4.1 | **Pruebas de módulo de monitorización general del sistema** | 0.5d | 2019-04-12 16:59 | 2019-04-15 11:59 |  | 12.66d |  |
| 356 | 1.6.1.4.1.1 | Planear las pruebas basándose en su diseño | 0.5d | 2019-04-12 16:59 | 2019-04-15 11:59 |  | 12.66d | Programador Junior1 |
| 357 | 1.5.1.4.2 | **Pruebas de módulo de entretenimiento** | 0.5d | 2019-04-12 16:59 | 2019-04-15 11:59 |  | 12.66d |  |
| 358 | 1.6.1.4.2.1 | Planear las pruebas basándose en su diseño | 0.5d | 2019-04-12 16:59 | 2019-04-15 11:59 |  | 12.66d | Programador Junior2 |
| 359 | 1.5.1.4.3 | **Pruebas de módulo para muestra de datos y comandas** | 0.5d | 2019-04-12 16:59 | 2019-04-15 11:59 |  | 12.66d |  |
| 360 | 1.6.1.4.3.1 | Planear las pruebas basándose en su diseño | 0.5d | 2019-04-12 16:59 | 2019-04-15 11:59 |  | 12.66d | Programador Senior |
| 361 | 1.5.1.4.4 | **Pruebas de módulo de gestión de proveedores** | 0.5d | 2019-04-15 11:59 | 2019-04-15 16:59 | 355 | 12.66d |  |
| 362 | 1.6.1.4.4.1 | Planear las pruebas basándose en su diseño | 0.5d | 2019-04-15 11:59 | 2019-04-15 16:59 |  | 12.66d | Programador Junior1 |
| 363 | 1.5.1.4.5 | **Pruebas de módulo del camarero** | 0.5d | 2019-04-15 11:59 | 2019-04-15 16:59 | 357 | 12.66d |  |
| 364 | 1.6.1.4.5.1 | Planear las pruebas basándose en su diseño | 0.5d | 2019-04-15 11:59 | 2019-04-15 16:59 |  | 12.66d | Programador Junior2 |

| ID | WBS | Task | Duration | Start | Finish | Predecessors | Total slack | Resources |
| --- | --- | --- | --- | --- | --- | --- | --- | --- |
| 365 | 1.5.1.4.6 | **Pruebas del módulo de cocinas/barra** | 0.5d | 2019-04-15 11:59 | 2019-04-15 16:59 | 359 | 12.66d |  |
| 366 | 1.6.1.4.6.1 | Planear las pruebas basándose en su diseño | 0.5d | 2019-04-15 11:59 | 2019-04-15 16:59 |  | 12.66d | Programador Senior |
| 367 | 1.5.2 | **Ejecución de pruebas** | 10.06d | 2019-04-15 16:59 | 2019-04-30 08:29 | 334 | 12.66d |  |
| 368 | 1.5.2.1 | **Ejecución de casos de prueba** | 3d | 2019-04-15 16:59 | 2019-04-18 16:59 |  | 12.66d |  |
| 369 | 1.5.2.1.1 | **Ejecución de conjunto de casos de unidad** | 2d | 2019-04-15 16:59 | 2019-04-17 16:59 |  | 112.66d |  |
| 370 | 1.6.2.1.1.1 | Dividir los equipos para ejecutar las pruebas de cada unidad | 0.5d | 2019-04-15 16:59 | 2019-04-16 11:59 |  | 12.66d | Programador Senior |
| 371 | 1.6.2.1.1.2 | Ejecutar las pruebas de cada módulo individual | 2d | 2019-04-15 16:59 | 2019-04-17 16:59 | 29 | 112.66d | Analista-Programador |
| 372 | 1.5.2.1.2 | **Ejecución de conjunto de casos de integración** | 2.5d | 2019-04-15 16:59 | 2019-04-18 11:59 |  | 62.66d |  |
| 373 | 1.6.2.1.2.1 | Ejecutar las pruebas para comprobar que la integración de módulos no tiene fallos | 2.5d | 2019-04-15 16:59 | 2019-04-18 11:59 |  | 62.66d | Programador Junior1 |
| 374 | 1.5.2.1.3 | **Ejecución de conjunto de casos de sistema** | 2.5d | 2019-04-15 16:59 | 2019-04-18 11:59 |  | 62.66d |  |
| 375 | 1.6.2.1.3.1 | Ejecutar las pruebas de sistema | 2.5d | 2019-04-15 16:59 | 2019-04-18 11:59 |  | 62.66d | Programador Junior2 |
| 376 | 1.5.2.1.4 | **Ejecución de conjunto de casos de validación** | 2.5d | 2019-04-16 11:59 | 2019-04-18 16:59 |  | 12.66d |  |
| 377 | 1.6.2.1.4.1 | Ejecutar las pruebas de validación del programa | 2.5d | 2019-04-16 11:59 | 2019-04-18 16:59 | 370 | 12.66d | Programador Senior |
| 378 | 1.5.2.2 | **Listado de errores** | 2.5d | 2019-04-18 16:59 | 2019-04-23 11:59 | 368 | 12.66d |  |
| 379 | 1.5.2.2.1 | **Enumeración de errores graves** | 2d | 2019-04-18 16:59 | 2019-04-22 16:59 |  | 12.66d |  |
| 380 | 1.6.2.2.1.1 | Crear un listado con los errores que se consideran más graves | 0.5d | 2019-04-18 16:59 | 2019-04-19 11:59 |  | 12.66d | Analista-Programador |
| 381 | 1.6.2.2.1.2 | Analizar cuales de los errores son tan graves como se estima y cuales pueden desestimarse | 1.5d | 2019-04-19 11:59 | 2019-04-22 16:59 | 380 | 12.66d | Analista-Programador |
| 382 | 1.5.2.2.2 | **Desestimación de errores leves o de otro tipo** | 0.5d | 2019-04-22 16:59 | 2019-04-23 11:59 |  | 12.66d |  |
| 383 | 1.6.2.2.2.1 | Analizar los errores leves para observar que alguna combinación de estos no cause problemas graves | 0.5d | 2019-04-22 16:59 | 2019-04-23 11:59 | 381 | 12.66d | Programador Senior |
| 384 | 1.5.2.3 | **Corrección de errores** | 2.56d | 2019-04-23 11:59 | 2019-04-26 08:29 | 378 | 12.66d |  |
| 385 | 1.5.2.3.1 | **Depuración de errores** | 2.06d | 2019-04-23 11:59 | 2019-04-25 13:29 |  | 12.66d |  |
| 386 | 1.6.2.3.1.1 | Arreglar todos los errores graves | 2d | 2019-04-23 13:29 | 2019-04-25 13:29 | 30 | 12.66d | Programador Senior |
| 387 | 1.6.2.3.1.2 | Arreglar los errores leves que causen errores graves como conjunto | 2d | 2019-04-23 11:59 | 2019-04-25 11:59 |  | 18.85d | Programador Junior1; Programador Junior2 |
| 388 | 1.5.2.3.2 | **Verificación de corrección** | 0.5d | 2019-04-25 13:29 | 2019-04-26 08:29 | 385 | 12.66d |  |
| 389 | 1.6.2.3.2.1 | Comprobar que las correcciones han sido realizadas sin causar mas errores | 0.5d | 2019-04-25 13:29 | 2019-04-26 08:29 |  | 12.66d | Analista-Programador |

| ID | WBS | Task | Duration | Start | Finish | Predecessors | Total slack | Resources |
| --- | --- | --- | --- | --- | --- | --- | --- | --- |
| 390 | 1.5.2.4 | **Verificación de terminación** | 2d | 2019-04-26 08:29 | 2019-04-30 08:29 | 384 | 12.66d |  |
| 391 | 1.5.2.4.1 | **Revisión de listado de errores** | 1.5d | 2019-04-26 08:29 | 2019-04-29 13:29 |  | 12.66d |  |
| 392 | 1.6.2.4.1.1 | Revisar el listado de errores e informe de correcciones | 1.5d | 2019-04-26 08:29 | 2019-04-29 13:29 |  | 12.66d | Analista-Programador |
| 393 | 1.5.2.4.2 | **Aprobación formal de finalización** | 0.5d | 2019-04-29 13:29 | 2019-04-30 08:29 | 391 | 12.66d |  |
| 394 | 1.6.2.4.2.1 | Reunirse con el encargado para formalizar la validación e informar del progreso semanal | 0.5d | 2019-04-29 13:29 | 2019-04-30 08:29 |  | 12.66d | Analista-Programador; Director de proyecto |
| 395 | 1.5.3 | **Análisis de errores y evaluación** | 2.65d | 2019-04-30 08:29 | 2019-05-02 14:39 | 367 |  |  |
| 396 | 1.5.3.1 | **Creación de documento de errores** | 1d | 2019-04-30 09:29 | 2019-05-01 09:29 |  |  |  |
| 397 | 1.6.3.1.1 | Redactar documento de errores | 1d | 2019-04-30 09:29 | 2019-05-01 09:29 | 31 |  | Analista-Programador |
| 398 | 1.5.3.2 | **Catalogación de errores** | 1d | 2019-04-30 08:29 | 2019-05-01 08:29 |  | 12.66d |  |
| 399 | 1.6.3.2.1 | Catalogar errores basandose en el análisis realizado en la ejecución de pruebas | 1d | 2019-04-30 08:29 | 2019-05-01 08:29 | 382, 379 | 12.66d | Analista-Programador |
| 400 | 1.5.3.3 | **Realización de análisis estadísticos** | 1.5d | 2019-05-01 09:29 | 2019-05-02 14:29 | 398, 396 |  |  |
| 401 | 1.6.3.3.1 | Realizar análisis estadístico de errores | 1d | 2019-05-01 09:29 | 2019-05-02 09:29 |  |  | Analista-Diseñador; Analista-Programador |
| 402 | 1.6.3.3.2 | Redactar informe estadístico | 0.5d | 2019-05-02 09:29 | 2019-05-02 14:29 | 401 |  | Analista-Diseñador; Analista-Programador |
| 403 | 1.5.3.4 | **Adición al archivo de proyectos de la empresa** | 0.02d | 2019-05-02 14:29 | 2019-05-02 14:39 | 400, 398, 396 |  |  |
| 404 | 1.6.3.4.1 | Añadir los documentos creados al archivo de la empresa | 0.02d | 2019-05-02 14:29 | 2019-05-02 14:39 |  |  | Director de proyecto |
